How a schedule from MS Project XML changed from version to version. A marks actual dates.

## Version 1 (saved 2020-11-23)

Note of the change: add MS project .xml file export

| ID | WBS | Task | Duration | Start | Finish | Predecessors |
| --- | --- | --- | --- | --- | --- | --- |
| 1 | 1 | **Documentation** | 665d | 2020-11-02 | 2023-05-19 |  |
| 2 |  | Requirements list | 22d | 2020-11-02 | 2020-12-01 |  |
| 3 |  | External review of requirements list | 6d | 2020-12-02 | 2020-12-09 | 2 |
| 4 |  | Specification document | 29d | 2020-12-10 | 2021-01-19 | 3 |
| 5 |  | External review of specification | 1d | 2021-01-20 | 2021-01-20 | 4 |
| 6 |  | Help documentation - man pages | 471d | 2021-07-30 | 2023-05-19 | 30 |
| 7 |  | Developer guide | 471d | 2021-07-30 | 2023-05-19 | 30 |
| 8 |  | User guide | 471d | 2021-07-30 | 2023-05-19 | 30 |
| 9 | 2 | **Code Developement** | 804d | 2020-04-01 | 2023-05-01 |  |
| 10 | 2.1 | **Create build system** | 15d | 2020-11-02 | 2020-11-20 |  |
| 11 |  | Create and evaluate automake build system | 15d | 2020-11-02 | 2020-11-20 |  |
| 12 |  | Create and evaluate cmake build system | 15d | 2020-11-02 | 2020-11-20 |  |
| 13 | 2.2 | **Import legacy software** | 45d | 2020-11-02 | 2021-01-01 |  |
| 14 |  | Import old libraries (e.g. mk4utils) | 15d | 2020-11-02 | 2020-11-20 |  |
| 15 |  | Import and build old executables (fourfit, etc.) | 15d | 2020-11-02 | 2020-11-20 |  |
| 16 |  | Import tests for legacy libraries/execuatables (e.g. fourfit) | 30d | 2020-11-23 | 2021-01-01 | 14, 15 |
| 17 | 2.3 | **Develop new data container classes (DCC)** | 239d | 2020-04-01 | 2021-03-01 |  |
| 18 |  | Create data container class definitions | 30d | 2020-11-02 | 2020-12-11 |  |
| 19 |  | Disk I/O library for DCC | 30d | 2020-12-14 | 2021-01-22 | 18 |
| 20 |  | mk4 to new DCC conversion library | 30d | 2020-12-14 | 2021-01-22 | 18 |
| 21 |  | mk4 to DCC conversion executable | 26d | 2021-01-25 | 2021-03-01 | 20 |
| 22 |  | DiFX to DCC conversion executable | 56d | 2020-12-14 | 2021-03-01 | 18 |
| 23 |  | I/O export utilities (HDF5,UVFITS,etc.) | 1d | 2020-04-01 | 2020-04-01 |  |
| 24 | 2.4 | **Develop VLBI data analysis library and executables** | 561d | 2021-03-08 | 2023-05-01 | 17, 35, 39 |
| 25 |  | Demonstrate simple single-band-delay search | 14d | 2021-03-08 | 2021-03-25 |  |
| 26 |  | Implement data flagging (time, freq, ad-hoc) | 43d | 2021-03-08 | 2021-05-05 |  |
| 27 |  | Implement per-AP/per-channel phase/delay correction/calib. | 44d | 2021-03-08 | 2021-05-06 |  |
| 28 |  | Implement per-AP/sub-channel phase/delay correction/cal. | 160d | 2021-03-09 | 2021-10-18 |  |
| 29 |  | Implement per-AP/ad-hoc phase/delay correction/calib. | 161d | 2021-03-08 | 2021-10-18 |  |
| 30 |  | Demonstrate single-baseline fringe fit with new data containters/operators | 60d | 2021-05-07 | 2021-07-29 | 25, 27, 26 |
| 31 |  | Develop fourfit replacement | 300d | 2021-07-30 | 2022-09-22 | 30 |
| 32 |  | Develop alist replacement | 60d | 2021-07-30 | 2021-10-21 | 30 |
| 33 |  | Develop aedit replacement | 240d | 2021-10-22 | 2022-09-22 | 32 |
| 34 |  | Experimental multi-baseline fringe-fit? | 171d | 2022-09-05 | 2023-05-01 |  |
| 35 | 2.5 | **Develop utility libraries** | 90d | 2020-11-02 | 2021-03-05 |  |
| 36 |  | Develop messaging/logging utility | 15d | 2020-11-02 | 2020-11-20 |  |
| 37 |  | Develop timer tool for profiling | 15d | 2020-11-02 | 2020-11-20 |  |
| 38 |  | Develop math library (minimization, interpol., mx solve, etc.) | 90d | 2020-11-02 | 2021-03-05 |  |
| 39 | 2.6 | **Develop data operator library** | 35d | 2020-12-14 | 2021-01-29 |  |
| 40 |  | Develop basic data operator class definitions | 30d | 2020-12-14 | 2021-01-22 | 18 |
| 41 |  | Functor broadcast operator | 5d | 2021-01-25 | 2021-01-29 | 40 |
| 42 |  | Array reduction operator | 5d | 2021-01-25 | 2021-01-29 | 40 |
| 43 |  | Multidimensional FFT operator | 5d | 2021-01-25 | 2021-01-29 | 40 |
| 44 | 2.7 | **Develop python bindings/libraries** | 494d | 2020-11-02 | 2022-09-22 |  |
| 45 |  | Develop python control layer for fringe fitting control | 300d | 2021-07-30 | 2022-09-22 | 30, 46, 47 |
| 46 |  | python bindings to data operators | 30d | 2021-02-01 | 2021-03-12 | 39 |
| 47 |  | Python bindings to DCC | 30d | 2021-03-02 | 2021-04-12 | 17 |
| 48 |  | Develop python plotting utilities | 120d | 2020-11-02 | 2021-04-16 |  |
| 49 | 2.8 | **Parallel acceleration** | 120d | 2022-09-23 | 2023-03-09 |  |
| 50 |  | Implement parallel data operators for TBD tasks | 120d | 2022-09-23 | 2023-03-09 | 31 |
| 51 |  | Implement MPI executables for TBD tasks | 120d | 2022-09-23 | 2023-03-09 | 31 |
| 52 | 3 | **Geodesy Specific Tasks** | 480d | 2021-03-02 | 2023-01-02 |  |
| 53 |  | Implement data containers for p-cal data | 30d | 2021-03-02 | 2021-04-12 | 17 |
| 54 |  | Implement multi-tone p-cal correction | 30d | 2021-04-13 | 2021-05-24 | 53 |
| 55 |  | Implement basic single-baseline dTEC search | 120d | 2021-05-25 | 2021-11-08 | 54 |
| 56 |  | Implement multi-baseline dTEC search | 120d | 2021-11-09 | 2022-04-25 | 55 |
| 57 |  | Source structure corrections? | 300d | 2021-11-09 | 2023-01-02 | 55 |

## Version 2 (saved 2020-11-23)

Last finish stays 2023-05-19.

Added:

| ID | Task | Duration | Start | Finish | Predecessors |
| --- | --- | --- | --- | --- | --- |
| 51 | I/O Import/Export executables (HDF5, UVFITS, etc.) | 300d | 2021-03-02 | 2022-04-25 | 17 |

Removed: 23 I/O export utilities (HDF5,UVFITS,etc.)

Changed:

| ID | Task | Start | Duration | Other |
| --- | --- | --- | --- | --- |
| 9 | **Code Developement** | 2020-04-01 → 2020-11-02 (+215d) | 804d → 651d |  |
| 17 | **Develop new data container classes (DCC)** | 2020-04-01 → 2020-11-02 (+215d) | 239d → 86d |  |
| 48 | **Parallel acceleration & Extras** | 2022-09-23 → 2021-03-02 (-570d) | 120d → 528d | was named Parallel acceleration |

## Version 3 (saved 2020-11-23)

Last finish stays 2023-05-19. Complete tasks 0 → 4.

Changed:

| ID | Task | Start | Finish | Duration | Complete | Predecessors |
| --- | --- | --- | --- | --- | --- | --- |
| 1 | **Documentation** |  |  |  | 0% → 1% |  |
| 2 | Requirements list |  |  |  | 0% → 70% |  |
| 4 | Specification document |  |  |  | 0% → 10% |  |
| 9 | **Code Developement** |  |  |  | 0% → 6% |  |
| 10 | **Create build system** |  |  |  | 0% → 90% |  |
| 11 | Create and evaluate automake build system |  |  |  | 0% → 90% |  |
| 12 | Create and evaluate cmake build system |  |  |  | 0% → 90% |  |
| 13 | **Import legacy software** |  |  |  | 0% → 50% |  |
| 14 | Import old libraries (e.g. mk4utils) |  |  |  | 0% → 100% |  |
| 15 | Import and build old executables (fourfit, etc.) |  |  |  | 0% → 100% |  |
| 17 | **Develop new data container classes (DCC)** |  |  |  | 0% → 26% |  |
| 18 | Create data container class definitions |  |  |  | 0% → 75% |  |
| 20 | mk4 to new DCC conversion library |  |  |  | 0% → 40% |  |
| 21 | mk4 to DCC conversion executable |  |  |  | 0% → 40% |  |
| 32 | Develop aedit replacement |  |  |  |  | 31 → 47, 31 |
| 34 | **Develop utility libraries** |  |  |  | 0% → 37% |  |
| 35 | Develop messaging/logging utility |  |  |  | 0% → 90% |  |
| 36 | Develop timer tool for profiling |  |  |  | 0% → 90% |  |
| 37 | Develop math library (minimization, interpol., mx solve, etc.) |  |  |  | 0% → 20% |  |
| 38 | **Develop data operator library** |  | 2021-01-29 → 2021-02-11 (+13d) | 35d → 44d | 0% → 48% |  |
| 40 | Functor broadcast operator |  | 2021-01-29 → 2021-02-11 (+13d) | 5d → 14d | 0% → 50% |  |
| 41 | Array reduction operator |  | 2021-01-29 → 2021-02-11 (+13d) | 5d → 14d | 0% → 100% |  |
| 42 | Multidimensional FFT operator |  | 2021-01-29 → 2021-02-11 (+13d) | 5d → 14d | 0% → 100% |  |
| 43 | **Develop python bindings/libraries** |  |  |  | 0% → 1% |  |
| 45 | python bindings to data operators | 2021-02-01 → 2021-02-12 (+11d) | 2021-03-12 → 2021-07-14 (+124d) | 30d → 109d |  |  |
| 46 | Python bindings to DCC |  | 2021-04-12 → 2021-07-15 (+94d) | 30d → 98d |  |  |
| 47 | Develop python plotting utilities |  | 2021-04-16 → 2021-07-22 (+97d) | 120d → 189d | 0% → 5% |  |
